# MigrationQualité

Schedule from GanttProject, 2020-06-29 to 2021-02-01.
Holidays every year on 01-01, 07-01, 12-25, 12-26

## Calendars

- Project calendar: Mon-Fri working; Sat-Sun off.

## Resources

| Resource |
| --- |
| Pascale |
| Geoffroy |
| Amanda |
| Nicolas |

## Schedule

| ID | WBS | Task | Duration | Start | Finish | Predecessors | Resources |
| --- | --- | --- | --- | --- | --- | --- | --- |
| 1 | 1 | **Phase#1- Read Access** | 151d | 2020-07-02 | 2021-02-01 |  |  |
| 2 | 1.1 | CGP-Data quality needs | 27d | 2020-07-02 | 2020-08-07 |  | Amanda |
| 3 | 1.2 | Transaction model definition | 21d | 2020-09-02 | 2020-09-30 |  |  |
| 4 | 1.3 | Database implementation | 11d | 2020-09-07 | 2020-09-21 |  | Geoffroy |
| 5 | 1.4 | Old DQ records migration | 11d | 2020-09-16 | 2020-09-30 |  | Pascale |
| 6 | 1.5 | SOW-Creation | 19d | 2020-09-01 | 2020-09-25 |  | Geoffroy; Nicolas |
| 7 | 1.6 | API developpement (Contract) | 65d | 2020-10-01 | 2020-12-31 |  | Geoffroy [10%] |
| 8 | 1.7 | Test and PreProd | 20d | 2021-01-04 | 2021-01-29 |  |  |
| 9 | 1.8 | Deployment | 1d | 2021-02-01 | 2021-02-01 | 8 |  |
| 10 | 2 | OpenAPI learning and training | 46d | 2020-06-29 | 2020-09-01 |  | Pascale; Geoffroy |
